# 项目计划模板

Schedule from MS Project, 2010-08-20 to 2011-01-28.
Microsoft

## Calendars

- hikvision研发日历: Mon-Fri 08:00-12:00, 13:00-17:00; Sat-Sun off. Exceptions (off unless hours are given): 2010-09-19 08:00-12:00, 13:00-17:00, 2010-09-22 to 2010-09-24, 2010-09-25 to 2010-09-26 08:00-12:00, 13:00-17:00, 2010-10-01 to 2010-10-02, 2010-10-04 to 2010-10-07, 2010-10-09 08:00-12:00, 13:00-17:00.

## Resources

| Resource |
| --- |
| 吕明成 |
| 尹志新 |
| 方建才 |
| 吕军 |
| 陈翼飞 |
| 李凯yf |
| 王辉 |
| 张鹏举 |
| 徐斌峰 |
| 胡胜宇 |
| 余家骝 |
| 张亮 |
| 诸葛欣 |
| 翁轲杰 |
| 张国梁 |
| 苏东寅 |
| 谭丽辉 |
| 李青青 |
| 闫祝亮 |
| 王丹2 |
| 金晶 |
| 周文斋 |
| 张英 |
| 姚敏 |
| 黄征宇 |
| 花蓉蓉 |
| 左智明 |
| 郭晓宇 |

## Schedule

| ID | WBS | Task | Type | Duration | Start | Finish | Predecessors | Total slack | Free slack | Constraint | Resources | Work | 成果物 | 工作组 |
| --- | --- | --- | --- | --- | --- | --- | --- | --- | --- | --- | --- | --- | --- | --- |
| 1 | 302 | **PJ01D2010081701** |  | 112d | 2010-08-20 | 2011-01-28 |  | 0d |  |  |  | 4022h |  |  |
| 2 | 302.89 | **需求开发** |  | 12d | 2010-08-23 | 2010-09-07 |  | 57d |  |  |  | 84h |  |  |
| 3 | 302.89.10 | 需求开发活动 |  | 12d | 2010-08-23 | 2010-09-07 |  | 99d |  | finish no earlier than 2010-09-07 | 吕明成 [83.3%] | 80h | 产品需求说明书、需求跟踪矩阵 | 系统组 |
| 4 | 302.89.7 | 产品需求会议评审 |  | 2d | 2010-09-06 | 2010-09-07 |  | 47d | 0d | start no earlier than 2010-09-06 | 吕明成 [25%] | 4h | 评审单号 | 系统组 |
| 5 | 302.90 | 需求开发完成 | milestone | 0d | 2010-09-07 | 2010-09-07 | 4 | 99d |  | finish no earlier than 2010-09-06 |  |  |  |  |
| 6 | 302.91 | **总体设计** |  | 8d | 2010-09-08 | 2010-09-17 | 4 | 46d | 0d |  |  | 40h |  |  |
| 7 | 302.91.6 | 总体设计活动-软件 |  | 5d | 2010-09-08 | 2010-09-14 |  | 47d | 1d | finish no earlier than 2010-09-07 | 吕明成 [50%] | 20h | 总体设计说明书、产品差异分析表、需求跟踪矩阵 | 系统组 |
| 8 | 302.91.8 | 总体设计活动-硬件 |  | 5d | 2010-09-08 | 2010-09-14 |  | 47d | 1d | start no earlier than 2010-09-01 | 张国梁 [20%] | 8h | 总体设计说明书、产品差异分析表、需求跟踪矩阵 | 系统组 |
| 9 | 302.91.9 | 总体设计活动-结构 |  | 5d | 2010-09-08 | 2010-09-14 |  | 47d | 1d | start no earlier than 2010-09-01 | 张亮 [20%] | 8h | 总体设计说明书、产品差异分析表、需求跟踪矩阵 | 系统组 |
| 10 | 302.91.7 | 总体设计说明书会议评审 |  | 2d | 2010-09-16 | 2010-09-17 | 9, 7, 8 | 46d | 0d | finish no earlier than 2010-09-17 | 吕明成 [25%] | 4h | 评审单号 | 系统组 |
| 11 | 302.92 | 总体设计完成 | milestone | 0d | 2010-09-17 | 2010-09-17 | 10 | 91d |  | start no earlier than 2010-09-17 |  |  |  |  |
| 12 | 302.93 | **软件开发** |  | 53d | 2010-09-19 | 2010-12-07 | 6 | 38d |  |  |  | 1452h |  |  |
| 13 | 302.93.20 | **内核驱动程序开发** |  | 50d | 2010-09-19 | 2010-12-02 |  | 41d |  |  |  | 124h |  |  |
| 14 | 302.93.20.9 | **软件概要设计** |  | 9d | 2010-09-19 | 2010-09-30 |  | 66d |  |  |  | 20h |  |  |
| 15 | 302.93.20.9.4 | 概要设计活动 |  | 5d | 2010-09-19 | 2010-09-26 |  | 69d | 3d | finish no earlier than 2010-09-24 | 尹志新 [40%] | 16h | 概要设计说明书、需求跟踪矩阵 | 内核驱动开发组 |
| 16 | 302.93.20.9.5 | 概要设计说明书会议评审 |  | 1d | 2010-09-30 | 2010-09-30 | 15 | 66d | 0d | finish no earlier than 2010-09-30 | 尹志新 [50%] | 4h | 评审单号 | 内核驱动开发组 |
| 17 | 302.93.20.10 | 详细设计 |  | 2d | 2010-10-08 | 2010-10-09 | 16 | 66d | 5d | start no earlier than 2010-10-08 | 尹志新 | 16h | 详细设计说明书 | 内核驱动开发组 |
| 18 | 302.93.20.11 | 编程 |  | 10d | 2010-10-18 | 2010-10-29 | 17 | 61d | 11d | start no earlier than 2010-10-18 | 尹志新 [50%] | 40h | 代码,PC-lint告警消除报告 | 内核驱动开发组 |
| 19 | 302.93.20.12 | 代码走查 |  | 1d | 2010-11-16 | 2010-11-16 | 18 | 50d | 0d | start no earlier than 2010-11-16 | 尹志新 | 8h | 代码走查记录 | 内核驱动开发组 |
| 20 | 302.93.20.13 | 单元测试 |  | 3d | 2010-11-17 | 2010-11-19 | 19 | 50d |  | start no earlier than 2010-11-08 | 尹志新 | 24h | 单元测试记录 | 内核驱动开发组 |
| 21 | 302.93.20.15 | 集成测试 |  | 5d | 2010-11-26 | 2010-12-02 |  | 41d |  | start no earlier than 2010-11-26 | 尹志新 [40%] | 16h | 集成测试方案、集成测试用例、集成测试代码、集成测试脚本、集成测试报告 | 内核驱动开发组 |
| 22 | 302.93.22 | **DM648 DSP程序开发** |  | 50d | 2010-09-19 | 2010-12-02 |  | 41d |  |  |  | 116h |  |  |
| 23 | 302.93.22.9 | **软件概要设计** |  | 9d | 2010-09-19 | 2010-09-30 |  | 69d |  |  |  | 20h |  |  |
| 24 | 302.93.22.9.4 | 概要设计活动 |  | 5d | 2010-09-19 | 2010-09-26 |  | 72d | 3d | finish no earlier than 2010-09-24 | 吕军 [40%] | 16h | 概要设计说明书、需求跟踪矩阵 | DSP程序开发组 |
| 25 | 302.93.22.9.5 | 概要设计说明书会议评审 |  | 1d | 2010-09-30 | 2010-09-30 | 24 | 69d | 0d | start no earlier than 2010-09-30 | 吕军 [50%] | 4h | 评审单号 | DSP程序开发组 |
| 26 | 302.93.22.10 | 详细设计 |  | 2d | 2010-10-08 | 2010-10-09 | 25 | 69d | 5d | start no earlier than 2010-10-08 | 吕军 | 16h | 详细设计说明书 | DSP程序开发组 |
| 27 | 302.93.22.11 | 编程 |  | 10d | 2010-10-18 | 2010-10-29 | 26 | 64d | 11d | start no earlier than 2010-10-18 | 吕军 [50%] | 40h | 代码,PC-lint告警消除报告 | DSP程序开发组 |
| 28 | 302.93.22.12 | 代码走查 |  | 1d | 2010-11-16 | 2010-11-16 | 27 | 53d |  | start no earlier than 2010-11-16 | 吕军 | 8h | 代码走查记录 | DSP程序开发组 |
| 29 | 302.93.22.13 | 单元测试 |  | 3d | 2010-11-08 | 2010-11-10 | 17 | 57d |  | start no earlier than 2010-11-08 | 吕军 | 24h | 单元测试记录 | DSP程序开发组 |
| 30 | 302.93.22.15 | 集成测试 |  | 5d | 2010-11-26 | 2010-12-02 |  | 41d |  | start no earlier than 2010-11-26 | 吕军 [20%] | 8h | 集成测试方案、集成测试用例、集成测试代码、集成测试脚本、集成测试报告 | DSP程序开发组 |

| ID | WBS | Task | Duration | Start | Finish | Predecessors | Total slack | Free slack | Constraint | Resources | Work | 成果物 | 工作组 |
| --- | --- | --- | --- | --- | --- | --- | --- | --- | --- | --- | --- | --- | --- |
| 31 | 302.93.23 | **设备程序开发** | 52d | 2010-09-20 | 2010-12-07 |  | 38d |  |  |  | 548h |  |  |
| 32 | 302.93.23.9 | **软件概要设计** | 8d | 2010-09-20 | 2010-09-30 |  | 45d |  |  |  | 44h |  |  |
| 33 | 302.93.23.9.4 | 概要设计活动 | 5d | 2010-09-20 | 2010-09-27 |  | 47d | 2d | start no earlier than 2010-09-20 | 陈翼飞 | 40h | 概要设计说明书、需求跟踪矩阵 | 设备程序开发组 |
| 34 | 302.93.23.9.5 | 概要设计说明书会议评审 | 1d | 2010-09-30 | 2010-09-30 | 33 | 45d | 2d | start no earlier than 2010-09-30 | 陈翼飞 [50%] | 4h | 评审单号 | 设备程序开发组 |
| 35 | 302.93.23.17 | **录像、回放、预览模块** | 42d | 2010-10-11 | 2010-12-07 |  | 38d |  |  |  | 248h |  |  |
| 36 | 302.93.23.17.1 | 详细设计 | 5d | 2010-10-11 | 2010-10-15 | 34 | 43d | 5d | start no earlier than 2010-10-11 | 陈翼飞 | 40h | 详细设计说明书 | 设备程序开发组 |
| 37 | 302.93.23.17.2 | 编程 | 20d | 2010-10-25 | 2010-11-19 | 36 | 38d | 0d | start no earlier than 2010-10-25 | 陈翼飞 | 160h | 代码,PC-lint告警消除报告 | 设备程序开发组 |
| 38 | 302.93.23.17.3 | 代码走查 | 9d | 2010-11-22 | 2010-12-02 | 37 | 38d | 0d | finish no earlier than 2010-11-26 | 吕明成 [33.3%] | 24h | 代码走查记录 | 设备程序开发组 |
| 39 | 302.93.23.17.4 | 单元测试 | 3d | 2010-12-03 | 2010-12-07 | 38 | 38d |  | start no earlier than 2010-11-24 | 陈翼飞 | 24h | 单元测试记录 | 设备程序开发组 |
| 40 | 302.93.23.18 | **日志、网络、抓图、刻录模块** | 42d | 2010-10-11 | 2010-12-07 |  | 38d |  |  |  | 248h |  |  |
| 41 | 302.93.23.18.9 | 详细设计 | 5d | 2010-10-11 | 2010-10-15 |  | 43d | 5d | start no earlier than 2010-10-11 | 郭晓宇 | 40h | 详细设计说明书 | 设备程序开发组 |
| 42 | 302.93.23.18.10 | 编程 | 20d | 2010-10-25 | 2010-11-19 | 41 | 38d | 0d | start no earlier than 2010-10-25 | 郭晓宇 | 160h | 代码,PC-lint告警消除报告 | 设备程序开发组 |
| 43 | 302.93.23.18.11 | 代码走查 | 9d | 2010-11-22 | 2010-12-02 | 42 | 38d | 0d | finish no earlier than 2010-11-26 | 吕明成 [33.3%] | 24h | 代码走查记录 | 设备程序开发组 |
| 44 | 302.93.23.18.12 | 单元测试 | 3d | 2010-12-03 | 2010-12-07 | 43 | 38d |  | start no earlier than 2010-11-24 | 郭晓宇 | 24h | 单元测试记录 | 设备程序开发组 |
| 45 | 302.93.23.15 | 集成测试 | 5d | 2010-11-26 | 2010-12-02 |  | 41d |  | start no earlier than 2010-11-26 | 郭晓宇 [20%] | 8h | 集成测试方案、集成测试用例、集成测试代码、集成测试脚本、集成测试报告 | 设备程序开发组 |
| 46 | 302.93.38 | **客户端软件开发** | 50d | 2010-09-19 | 2010-12-02 |  | 41d |  |  |  | 300h |  |  |
| 47 | 302.93.38.23 | **软件概要设计** | 9d | 2010-09-19 | 2010-09-30 |  | 65d |  |  |  | 20h |  |  |
| 48 | 302.93.38.23.9 | 概要设计活动 | 5d | 2010-09-19 | 2010-09-26 |  | 68d | 3d | finish no earlier than 2010-09-24 | 余家骝 [40%] | 16h | 概要设计说明书、需求跟踪矩阵 | 客户端程序开发组 |
| 49 | 302.93.38.23.10 | 概要设计说明书会议评审 | 1d | 2010-09-30 | 2010-09-30 | 48 | 65d | 0d | finish no earlier than 2010-09-30 | 余家骝 [50%] | 4h | 评审单号 | 客户端程序开发组 |
| 50 | 302.93.38.24 | **回放、语言模块** | 40d | 2010-10-08 | 2010-12-01 |  | 42d |  |  |  | 136h |  |  |
| 51 | 302.93.38.24.10 | 详细设计 | 2d | 2010-10-08 | 2010-10-09 | 49 | 65d | 20d | start no earlier than 2010-10-08 | 花蓉蓉 | 16h | 详细设计说明书 | 客户端程序开发组 |
| 52 | 302.93.38.24.11 | 编程 | 10d | 2010-11-08 | 2010-11-19 | 51 | 45d | 3d | finish no earlier than 2010-11-19 | 花蓉蓉 | 80h | 代码,PC-lint告警消除报告 | 客户端程序开发组 |
| 53 | 302.93.38.24.12 | 代码走查 | 2d | 2010-11-25 | 2010-11-26 | 52 | 42d | 0d | finish no earlier than 2010-11-26 | 花蓉蓉 | 16h | 代码走查记录 | 客户端程序开发组 |
| 54 | 302.93.38.24.13 | 单元测试 | 3d | 2010-11-29 | 2010-12-01 | 53 | 42d |  | finish no earlier than 2010-11-26 | 花蓉蓉 | 24h | 单元测试记录 | 客户端程序开发组 |

| ID | WBS | Task | Duration | Start | Finish | Predecessors | Total slack | Free slack | Constraint | Resources | Work | 成果物 | 工作组 |
| --- | --- | --- | --- | --- | --- | --- | --- | --- | --- | --- | --- | --- | --- |
| 55 | 302.93.38.25 | **日志、界面模块** | 40d | 2010-10-08 | 2010-12-01 |  | 42d |  |  |  | 136h |  |  |
| 56 | 302.93.38.25.19 | 详细设计 | 2d | 2010-10-08 | 2010-10-09 |  | 65d | 20d | start no earlier than 2010-10-08 | 左智明 | 16h | 详细设计说明书 | 客户端程序开发组 |
| 57 | 302.93.38.25.20 | 编程 | 10d | 2010-11-08 | 2010-11-19 | 56 | 45d | 3d | finish no earlier than 2010-11-19 | 左智明 | 80h | 代码,PC-lint告警消除报告 | 客户端程序开发组 |
| 58 | 302.93.38.25.21 | 代码走查 | 2d | 2010-11-25 | 2010-11-26 | 57 | 42d | 0d | finish no earlier than 2010-11-26 | 左智明 | 16h | 代码走查记录 | 客户端程序开发组 |
| 59 | 302.93.38.25.22 | 单元测试 | 3d | 2010-11-29 | 2010-12-01 | 58 | 42d |  | finish no earlier than 2010-11-26 | 左智明 | 24h | 单元测试记录 | 客户端程序开发组 |
| 60 | 302.93.38.26 | 集成测试 | 5d | 2010-11-26 | 2010-12-02 |  | 41d |  | finish no earlier than 2010-12-02 | 余家骝 [20%] | 8h | 集成测试方案、集成测试用例、集成测试代码、集成测试脚本、集成测试报告 | 客户端程序开发组 |
| 61 | 302.93.24 | **UI设计** | 20d | 2010-09-19 | 2010-10-21 |  | 71d |  |  |  | 40h |  |  |
| 62 | 302.93.24.9 | UI设计 | 20d | 2010-09-19 | 2010-10-21 |  | 71d |  | finish no earlier than 2010-10-15 | 李凯yf [25%] | 40h | 界面设计说明书 | UI开发组 |
| 63 | 302.93.25 | **GUI程序设计** | 50d | 2010-09-19 | 2010-12-02 |  | 41d |  |  |  | 108h |  |  |
| 64 | 302.93.25.9 | **软件概要设计** | 9d | 2010-09-19 | 2010-09-30 |  | 72d |  |  |  | 20h |  |  |
| 65 | 302.93.25.9.4 | 概要设计活动 | 5d | 2010-09-19 | 2010-09-26 |  | 75d | 3d | finish no earlier than 2010-09-24 | 张鹏举 [40%] | 16h | 界面设计说明书 | GUI程序开发组 |
| 66 | 302.93.25.9.5 | 概要设计说明书会议评审 | 1d | 2010-09-30 | 2010-09-30 | 65 | 72d | 0d | start no earlier than 2010-09-30 | 张鹏举 [50%] | 4h | 评审单号 | GUI程序开发组 |
| 67 | 302.93.25.10 | 详细设计 | 2d | 2010-10-08 | 2010-10-09 | 66 | 72d | 5d | start no earlier than 2010-10-08 | 张鹏举 | 16h | 详细设计说明书 | GUI程序开发组 |
| 68 | 302.93.25.11 | 编程 | 5d | 2010-10-18 | 2010-10-22 | 67 | 67d | 16d | start no earlier than 2010-10-18 | 张鹏举 | 40h | 代码,PC-lint告警消除报告 | GUI程序开发组 |
| 69 | 302.93.25.12 | 代码走查 | 1d | 2010-11-16 | 2010-11-16 | 68 | 51d | 0d | start no earlier than 2010-11-16 | 张鹏举 | 8h | 代码走查记录 | GUI程序开发组 |
| 70 | 302.93.25.13 | 单元测试 | 2d | 2010-11-17 | 2010-11-18 | 69 | 51d |  | start no earlier than 2010-11-08 | 张鹏举 | 16h | 单元测试记录 | GUI程序开发组 |
| 71 | 302.93.25.15 | 集成测试 | 5d | 2010-11-26 | 2010-12-02 |  | 41d |  | start no earlier than 2010-11-26 | 张鹏举 [20%] | 8h | 集成测试方案、集成测试用例、集成测试代码、集成测试脚本、集成测试报告 | GUI程序开发组 |
| 72 | 302.93.26 | **网络SDK开发** | 51d | 2010-09-20 | 2010-12-06 |  | 39d |  |  |  | 108h |  |  |
| 73 | 302.93.26.9 | **软件概要设计** | 8d | 2010-09-20 | 2010-09-30 |  | 40d |  |  |  | 20h |  |  |
| 74 | 302.93.26.9.4 | 概要设计活动 | 2d | 2010-09-20 | 2010-09-24 |  | 45d | 5d | finish no earlier than 2010-09-24 | 徐斌峰 | 16h | 概要设计说明书、需求跟踪矩阵 | 网络SDK开发组 |
| 75 | 302.93.26.9.5 | 概要设计说明书会议评审 | 1d | 2010-09-30 | 2010-09-30 | 74 | 40d | 0d | finish no earlier than 2010-09-30 | 徐斌峰 [50%] | 4h | 评审单号 | 网络SDK开发组 |
| 76 | 302.93.26.10 | 详细设计 | 6d | 2010-10-08 | 2010-10-14 | 75 | 40d | 1d | start no earlier than 2010-10-08 | 徐斌峰 [33.3%] | 16h | 详细设计说明书 | 网络SDK开发组 |
| 77 | 302.93.26.11 | 编程 | 25d | 2010-10-18 | 2010-11-19 | 76 | 39d | 0d | start no earlier than 2010-10-18 | 徐斌峰 [20%] | 40h | 代码,PC-lint告警消除报告 | 网络SDK开发组 |
| 78 | 302.93.26.12 | 代码走查 | 9d | 2010-11-22 | 2010-12-02 | 77 | 39d | 0d | start no earlier than 2010-11-16 | 徐斌峰 [11.1%] | 8h | 代码走查记录 | 网络SDK开发组 |
| 79 | 302.93.26.13 | 单元测试 | 2d | 2010-12-03 | 2010-12-06 | 78 | 39d |  | start no earlier than 2010-11-08 | 徐斌峰 | 16h | 单元测试记录 | 网络SDK开发组 |
| 80 | 302.93.26.16 | 集成测试 | 5d | 2010-11-26 | 2010-12-02 |  | 41d |  | start no earlier than 2010-11-26 | 徐斌峰 [20%] | 8h | 集成测试方案、集成测试用例、集成测试代码、集成测试脚本、集成测试报告 | 网络SDK开发组 |

| ID | WBS | Task | Duration | Start | Finish | Predecessors | Total slack | Free slack | Constraint | Resources | Work | 成果物 | 工作组 |
| --- | --- | --- | --- | --- | --- | --- | --- | --- | --- | --- | --- | --- | --- |
| 81 | 302.93.27 | **IE控件开发** | 50d | 2010-09-19 | 2010-12-02 |  | 41d |  |  |  | 108h |  |  |
| 82 | 302.93.27.9 | **软件概要设计** | 9d | 2010-09-19 | 2010-09-30 |  | 66d |  |  |  | 20h |  |  |
| 83 | 302.93.27.9.4 | 概要设计活动 | 5d | 2010-09-19 | 2010-09-26 |  | 69d | 3d | finish no earlier than 2010-09-24 | 胡胜宇 [40%] | 16h | 概要设计说明书、需求跟踪矩阵 | IE控件开发组 |
| 84 | 302.93.27.9.5 | 概要设计说明书会议评审 | 1d | 2010-09-30 | 2010-09-30 | 83 | 66d | 0d | finish no earlier than 2010-09-30 | 胡胜宇 [50%] | 4h | 评审单号 | IE控件开发组 |
| 85 | 302.93.27.10 | 详细设计 | 2d | 2010-10-08 | 2010-10-09 | 84 | 66d | 20d | start no earlier than 2010-10-08 | 胡胜宇 | 16h | 详细设计说明书 | IE控件开发组 |
| 86 | 302.93.27.11 | 编程 | 10d | 2010-11-08 | 2010-11-19 | 85 | 46d | 3d | finish no earlier than 2010-11-19 | 胡胜宇 [40%] | 32h | 代码,PC-lint告警消除报告 | IE控件开发组 |
| 87 | 302.93.27.12 | 代码走查 | 2d | 2010-11-25 | 2010-11-26 | 86 | 43d | 0d | finish no earlier than 2010-11-26 | 胡胜宇 | 16h | 代码走查记录 | IE控件开发组 |
| 88 | 302.93.27.13 | 单元测试 | 2d | 2010-11-29 | 2010-11-30 | 87 | 43d |  | finish no earlier than 2010-11-26 | 胡胜宇 | 16h | 单元测试记录 | IE控件开发组 |
| 89 | 302.93.27.15 | 集成测试 | 5d | 2010-11-26 | 2010-12-02 |  | 41d |  | start no earlier than 2010-11-26 | 胡胜宇 [20%] | 8h | 集成测试方案、集成测试用例、集成测试代码、集成测试脚本、集成测试报告 | IE控件开发组 |
| 90 | 302.94 | **硬件开发** | 36d | 2010-09-19 | 2010-11-12 |  | 55d |  |  |  | 440h |  |  |
| 91 | 302.94.9 | **主板** | 36d | 2010-09-19 | 2010-11-12 |  | 55d |  |  |  | 220h |  |  |
| 92 | 302.94.9.23 | **硬件详细设计** | 4d | 2010-09-19 | 2010-09-25 |  | 87d |  |  |  | 28h |  |  |
| 93 | 302.94.9.23.1 | 硬件详细设计 | 3d | 2010-09-19 | 2010-09-21 |  | 87d | 0d | start no earlier than 2010-09-19 | 张亮 | 24h | 硬件详细设计书、单板逻辑框图 | 硬件开发组 |
| 94 | 302.94.9.23.2 | 硬件详细设计会议评审 | 1d | 2010-09-25 | 2010-09-25 | 93 | 87d |  |  |  | 4h | 评审单号 |  |
| 95 | 302.94.9.19 | **单板原理设计** | 5d | 2010-09-25 | 2010-09-29 |  | 83d |  |  |  | 36h |  |  |
| 96 | 302.94.9.19.3 | 单板原理设计活动 | 4d | 2010-09-25 | 2010-09-28 |  | 83d | 0d | start no earlier than 2010-09-23 | 张亮 | 32h | 原理图、PCB作业指导书、硬件开发检查单、单板BOM表 | 硬件开发组 |
| 97 | 302.94.9.19.4 | 原理图会议评审 | 1d | 2010-09-29 | 2010-09-29 | 96 | 83d |  | start no earlier than 2010-09-29 | 张亮 [50%] | 4h | 评审单号 | 硬件开发组 |
| 98 | 302.94.9.20 | **PCB设计** | 9d | 2010-09-26 | 2010-10-12 |  | 78d |  |  |  | 36h |  |  |
| 99 | 302.94.9.20.3 | PCB设计活动 | 8d | 2010-09-26 | 2010-10-11 |  | 78d | 0d | finish no earlier than 2010-10-11 | 张亮 [50%] | 32h | PCB图纸 | 硬件开发组 |
| 100 | 302.94.9.20.4 | PCB图会议评审 | 1d | 2010-10-12 | 2010-10-12 | 99 | 78d |  |  | 张亮 [50%] | 4h | 评审单号 | 硬件开发组 |
| 101 | 302.94.9.21 | 单板制作 | 13d | 2010-10-13 | 2010-10-29 |  | 65d |  | start no earlier than 2010-10-13 | 张亮 [76.9%] | 80h | 单板试制报告 | 硬件开发组 |
| 102 | 302.94.9.22 | 单板测试 | 10d | 2010-11-01 | 2010-11-12 |  | 55d |  | finish no earlier than 2010-11-12 | 张亮 [50%] | 40h | 单板调试记录 | 硬件开发组 |
| 103 | 302.94.10 | **按键板** | 35d | 2010-09-20 | 2010-11-12 |  | 55d |  |  |  | 220h |  |  |
| 104 | 302.94.10.36 | **硬件详细设计** | 4d | 2010-09-20 | 2010-09-26 |  | 86d |  |  |  | 28h |  |  |
| 105 | 302.94.10.36.1 | 硬件详细设计 | 3d | 2010-09-20 | 2010-09-25 |  | 86d | 0d | start no earlier than 2010-09-20 | 张亮 | 24h | 硬件详细设计书、单板逻辑框图 | 硬件开发组 |
| 106 | 302.94.10.36.2 | 硬件详细设计会议评审 | 1d | 2010-09-26 | 2010-09-26 | 105 | 86d |  |  |  | 4h | 评审单号 |  |

| ID | WBS | Task | Duration | Start | Finish | Predecessors | Total slack | Free slack | Constraint | Resources | Work | 成果物 | 工作组 |
| --- | --- | --- | --- | --- | --- | --- | --- | --- | --- | --- | --- | --- | --- |
| 107 | 302.94.10.31 | **单板原理设计** | 5d | 2010-09-25 | 2010-09-29 |  | 83d |  |  |  | 36h |  |  |
| 108 | 302.94.10.31.10 | 单板原理设计活动 | 4d | 2010-09-25 | 2010-09-28 |  | 83d | 0d | start no earlier than 2010-09-23 | 张亮 | 32h | 原理图、PCB作业指导书、硬件开发检查单、单板BOM表 | 硬件开发组 |
| 109 | 302.94.10.31.11 | 原理图会议评审 | 1d | 2010-09-29 | 2010-09-29 | 108 | 83d |  | start no earlier than 2010-09-29 | 张亮 [50%] | 4h | 评审单号 | 硬件开发组 |
| 110 | 302.94.10.32 | **PCB设计** | 9d | 2010-09-26 | 2010-10-12 |  | 78d |  |  |  | 36h |  |  |
| 111 | 302.94.10.32.7 | PCB设计活动 | 8d | 2010-09-26 | 2010-10-11 |  | 78d | 0d | finish no earlier than 2010-10-11 | 张亮 [50%] | 32h | PCB图纸 | 硬件开发组 |
| 112 | 302.94.10.32.8 | PCB图会议评审 | 1d | 2010-10-12 | 2010-10-12 | 111 | 78d |  |  | 张亮 [50%] | 4h | 评审单号 | 硬件开发组 |
| 113 | 302.94.10.33 | 单板制作 | 13d | 2010-10-13 | 2010-10-29 |  | 65d |  | start no earlier than 2010-10-13 | 张亮 [76.9%] | 80h | 单板试制报告 | 硬件开发组 |
| 114 | 302.94.10.34 | 单板测试 | 10d | 2010-11-01 | 2010-11-12 |  | 55d |  | finish no earlier than 2010-11-12 | 张亮 [50%] | 40h | 单板调试记录 | 硬件开发组 |
| 115 | 302.95 | **结构开发** | 45d | 2010-09-20 | 2010-11-26 |  | 45d |  |  |  | 220h |  |  |
| 116 | 302.95.10 | **审讯机** | 45d | 2010-09-20 | 2010-11-26 |  | 45d |  |  |  | 220h |  |  |
| 117 | 302.95.10.336 | **外观设计** | 8d | 2010-09-20 | 2010-09-30 |  | 82d |  |  |  | 44h |  |  |
| 118 | 302.95.10.336.3 | 外观设计活动 | 5d | 2010-09-20 | 2010-09-27 |  | 84d | 2d | start no earlier than 2010-09-20 | 诸葛欣 | 40h | 效果图、丝印图、实体三维模型 | 结构开发组 |
| 119 | 302.95.10.336.4 | 外观设计会议评审 | 1d | 2010-09-30 | 2010-09-30 | 118 | 82d |  | start no earlier than 2010-09-30 | 诸葛欣 [50%] | 4h | 评审单号 | 结构开发组 |
| 120 | 302.95.10.350 | **面板** | 34d | 2010-10-08 | 2010-11-23 |  | 48d |  |  |  | 88h |  |  |
| 121 | 302.95.10.350.1 | **面板结构详细设计** | 12d | 2010-10-08 | 2010-10-22 |  | 70d |  |  |  | 28h |  |  |
| 122 | 302.95.10.350.1.8 | 详细设计活动 | 7d | 2010-10-08 | 2010-10-15 |  | 74d | 4d | start no earlier than 2010-10-08 | 翁轲杰 [42.9%] | 24h | 二维图纸、三维图纸、PCB结构图纸 | 结构开发组 |
| 123 | 302.95.10.350.1.9 | 二维图、三维图、PCB结构图会议评审 | 1d | 2010-10-22 | 2010-10-22 | 122 | 70d |  | finish no earlier than 2010-10-22 | 翁轲杰 [50%] | 4h | 评审单号 | 结构开发组 |
| 124 | 302.95.10.350.2 | **面板手板制作及验证** | 11d | 2010-10-19 | 2010-11-02 |  | 48d |  |  |  | 36h |  |  |
| 125 | 302.95.10.350.2.4 | 面板手板制作及验证 | 10d | 2010-10-19 | 2010-11-01 |  | 48d | 0d | start no earlier than 2010-10-19 | 翁轲杰 [40%] | 32h | 手板检验报告 | 结构开发组 |
| 126 | 302.95.10.350.2.6 | 面板手板会议评审 | 1d | 2010-11-02 | 2010-11-02 | 125 | 48d | 0d |  | 翁轲杰 [50%] | 4h | 评审记录 | 结构开发组 |
| 127 | 302.95.10.350.3 | 零件外加工及样品检测 | 15d | 2010-11-03 | 2010-11-23 | 126 | 48d |  | start no earlier than 2010-11-03 | 翁轲杰 [20%] | 24h | 样品检验报告 | 结构开发组 |
| 128 | 302.95.10.349 | **机箱** | 37d | 2010-10-08 | 2010-11-26 |  | 45d |  |  |  | 88h |  |  |
| 129 | 302.95.10.349.1 | **机箱结构详细设计** | 12d | 2010-10-08 | 2010-10-22 |  | 70d |  |  |  | 28h |  |  |
| 130 | 302.95.10.349.1.6 | 详细设计活动 | 7d | 2010-10-08 | 2010-10-15 |  | 71d | 1d | start no earlier than 2010-10-08 | 张国梁 [42.9%] | 24h | 二维图纸、三维图纸、PCB结构图纸 | 结构开发组 |
| 131 | 302.95.10.349.1.7 | 二维图、三维图、PCB结构图会议评审 | 4d | 2010-10-19 | 2010-10-22 | 130 | 70d |  | finish no earlier than 2010-10-22 | 张国梁 [12.5%] | 4h | 评审单号 | 结构开发组 |

| ID | WBS | Task | Type | Duration | Start | Finish | Predecessors | Total slack | Free slack | Constraint | Resources | Work | 成果物 | 工作组 |
| --- | --- | --- | --- | --- | --- | --- | --- | --- | --- | --- | --- | --- | --- | --- |
| 132 | 302.95.10.349.2 | **机箱手板制作及验证** |  | 14d | 2010-10-19 | 2010-11-05 |  | 45d |  |  |  | 36h |  |  |
| 133 | 302.95.10.349.2.4 | 机箱手板制作及验证 |  | 10d | 2010-10-19 | 2010-11-01 |  | 48d | 3d | start no earlier than 2010-10-19 | 张国梁 [40%] | 32h | 手板检验报告 | 结构开发组 |
| 134 | 302.95.10.349.2.6 | 机箱手板会议评审 |  | 1d | 2010-11-05 | 2010-11-05 | 133 | 45d | 0d | finish no earlier than 2010-11-05 | 张国梁 [50%] | 4h | 评审单号 | 结构开发组 |
| 135 | 302.95.10.349.3 | 零件外加工及样品检测 |  | 15d | 2010-11-08 | 2010-11-26 | 134 | 45d |  | start no earlier than 2010-06-01 | 张国梁 [20%] | 24h | 样品检验报告 | 结构开发组 |
| 136 | 302.120 | **包装标签设计** |  | 5d | 2010-12-24 | 2010-12-30 |  | 21d |  |  |  | 36h |  |  |
| 137 | 302.120.3 | 包装标签设计 |  | 4d | 2010-12-24 | 2010-12-29 |  | 21d | 0d | start no earlier than 2010-12-24 | 张国梁 | 32h | 包装图、标签图 | 结构开发组 |
| 138 | 302.120.4 | 包装标签设计会议评审 |  | 1d | 2010-12-30 | 2010-12-30 | 137 | 21d |  |  |  | 4h |  |  |
| 139 | 302.96 | **用户文档开发** |  | 14d | 2010-12-27 | 2011-01-13 |  | 11d |  |  |  | 84h |  |  |
| 140 | 302.96.4 | 用户文档开发活动 |  | 10d | 2010-12-27 | 2011-01-07 |  | 15d |  | finish no earlier than 2011-01-07 | 苏东寅 | 80h | 用户手册、产品介绍 | 用户文档组 |
| 141 | 302.96.5 | 用户文档会签评审 |  | 1d | 2011-01-13 | 2011-01-13 |  | 11d |  | start no earlier than 2011-01-13 | 苏东寅 [50%] | 4h | 评审单号 | 用户文档组 |
| 142 | 302.97 | **整机集成及测试** |  | 5d | 2010-11-01 | 2010-11-05 |  | 57d |  |  |  | 72h |  |  |
| 143 | 302.97.5 | 整机集成方案设计 |  | 5d | 2010-11-01 | 2010-11-05 |  | 60d |  | start no earlier than 2010-11-01 | 陈翼飞 [20%] | 8h | 整机集成及测试方案 | 系统组 |
| 144 | 302.97.3 | 整机集成方案设计会签评审 |  | 3d | 2010-11-01 | 2010-11-03 |  | 62d |  | start no earlier than 2010-11-01 | 陈翼飞 [33.3%] | 8h | 评审单号 | 系统组 |
| 145 | 302.97.13 | 整机集成及测试-内核驱动 |  | 4d | 2010-11-02 | 2010-11-05 |  | 60d |  | start no earlier than 2010-11-02 | 尹志新 [25%] | 8h | 整机集成测试报告 | 系统组 |
| 146 | 302.97.15 | 整机集成及测试-DSP |  | 4d | 2010-11-02 | 2010-11-05 |  | 60d |  | start no earlier than 2010-11-02 | 吕军 [25%] | 8h | 整机集成测试报告 | 系统组 |
| 147 | 302.97.14 | 整机集成及测试-设备 |  | 4d | 2010-11-02 | 2010-11-05 |  | 60d |  | start no earlier than 2010-11-02 | 陈翼飞 [25%] | 8h | 整机集成测试报告 | 系统组 |
| 148 | 302.97.16 | 整机集成及测试-客户端 |  | 4d | 2010-11-02 | 2010-11-05 |  | 60d |  | start no earlier than 2010-11-02 | 余家骝 [25%] | 8h | 整机集成测试报告 | 系统组 |
| 149 | 302.97.17 | 整机集成及测试-GUI |  | 4d | 2010-11-02 | 2010-11-05 |  | 60d |  | start no earlier than 2010-11-02 | 张鹏举 [25%] | 8h | 整机集成测试报告 | 系统组 |
| 150 | 302.97.18 | 整机集成及测试-网络SDK |  | 4d | 2010-11-02 | 2010-11-05 |  | 60d |  | start no earlier than 2010-11-02 | 徐斌峰 [25%] | 8h | 整机集成测试报告 | 系统组 |
| 151 | 302.97.4 | 整机集成及测试-IE控件 |  | 4d | 2010-11-02 | 2010-11-05 |  | 56d | 0d | start no earlier than 2010-11-02 | 胡胜宇 [25%] | 8h | 整机集成测试报告 | 系统组 |
| 152 | 302.98 | 设计与实现完成 | milestone | 0d | 2010-11-05 | 2010-11-05 | 151 | 56d | 40d |  |  |  |  |  |
| 153 | 302.99 | **检测认证** |  | 60d | 2010-11-01 | 2011-01-21 |  | 5d |  |  |  | 904h |  |  |
| 154 | 302.99.33 | **检测认证方案设计** |  | 20d | 2010-11-01 | 2010-11-26 |  | 45d |  |  |  | 88h |  |  |
| 155 | 302.99.33.28 | **系统测试方案设计** |  | 20d | 2010-11-01 | 2010-11-26 |  | 45d |  |  |  | 52h |  |  |
| 156 | 302.99.33.28.1 | 设备系统测试方案设计活动 |  | 20d | 2010-11-01 | 2010-11-26 |  | 45d |  | finish no earlier than 2010-11-26 | 谭丽辉 [10%] | 16h | 系统测试方案 | 系统测试组 |
| 157 | 302.99.33.28.2 | 客户端系统测试方案设计活动 |  | 20d | 2010-11-01 | 2010-11-26 |  | 45d |  | finish no earlier than 2010-11-26 | 李青青 [10%] | 16h | 系统测试方案 | 系统测试组 |
| 158 | 302.99.33.28.3 | 网络SDK系统测试方案设计活动 |  | 2d | 2010-11-25 | 2010-11-26 |  | 45d |  | finish no earlier than 2010-11-26 | 闫祝亮 | 16h | 系统测试方案 | 系统测试组 |
| 159 | 302.99.33.28.4 | 系统测试方案会签评审 |  | 5d | 2010-11-22 | 2010-11-26 |  | 45d |  | finish no earlier than 2010-11-26 | 谭丽辉 [10%] | 4h | 评审单号 | 系统测试组 |

| ID | WBS | Task | Duration | Start | Finish | Predecessors | Total slack | Constraint | Resources | Work | 成果物 | 工作组 |
| --- | --- | --- | --- | --- | --- | --- | --- | --- | --- | --- | --- | --- |
| 160 | 302.99.33.29 | **硬件测试方案设计** | 20d | 2010-11-01 | 2010-11-26 |  | 45d |  |  | 20h |  |  |
| 161 | 302.99.33.29.1 | 硬件测试方案设计活动 | 2d | 2010-11-01 | 2010-11-02 |  | 63d | start no earlier than 2010-11-01 | 王丹2 | 16h | 可靠性测试方案 | 硬件测试组 |
| 162 | 302.99.33.29.2 | 硬件测试方案会签评审 | 5d | 2010-11-22 | 2010-11-26 |  | 45d | finish no earlier than 2010-11-26 | 王丹2 [10%] | 4h | 评审单号 | 硬件测试组 |
| 163 | 302.99.33.30 | **市场准入检测方案设计** | 19.94d | 2010-11-01 | 2010-11-26 |  | 45d |  |  | 16h |  |  |
| 164 | 302.99.33.30.1 | 市场准入检测方案设计活动 | 13d | 2010-11-01 | 2010-11-18 |  | 51.94d | start no earlier than 2010-11-01 | 金晶 [11.5%] | 12h | 市场准入检测方案 | 检测认证组 |
| 165 | 302.99.33.30.2 | 市场准入检测方案会签评审 | 5d | 2010-11-22 | 2010-11-26 |  | 45d | finish no earlier than 2010-11-26 | 金晶 [10%] | 4h | 评审单号 | 检测认证组 |
| 166 | 302.99.34 | **系统测试** | 49d | 2010-11-01 | 2011-01-06 |  | 16d |  |  | 636h |  |  |
| 167 | 302.99.34.27 | 设备系统测试用例编写 | 20d | 2010-11-01 | 2010-11-26 |  | 45d | finish no earlier than 2010-11-26 | 谭丽辉 | 160h | 系统测试用例 | 系统测试组 |
| 168 | 302.99.34.28 | 客户端系统测试用例编写 | 20d | 2010-11-01 | 2010-11-26 |  | 45d | finish no earlier than 2010-11-26 | 李青青 | 160h | 系统测试用例 | 系统测试组 |
| 169 | 302.99.34.29 | 网络SDK系统测试用例编写 | 20d | 2010-11-01 | 2010-11-26 |  | 45d | finish no earlier than 2010-11-26 | 闫祝亮 | 160h | 系统测试用例 | 系统测试组 |
| 170 | 302.99.34.30 | **build1** | 4d | 2011-01-03 | 2011-01-06 | 152 | 16d |  |  | 52h |  |  |
| 171 | 302.99.34.30.25 | SDK系统测试 | 4d | 2011-01-03 | 2011-01-06 |  | 16d | start no earlier than 2011-01-03 | 闫祝亮 [81.2%] | 26h | 系统测试报告 | 系统测试组 |
| 172 | 302.99.34.30.26 | 设备程序系统测试 | 4d | 2011-01-03 | 2011-01-06 |  | 16d | start no earlier than 2011-01-03 | 周文斋 [40.6%] | 13h | 系统测试报告 | 系统测试组 |
| 173 | 302.99.34.30.27 | 客户端系统测试 | 4d | 2011-01-03 | 2011-01-06 |  | 16d | start no earlier than 2011-01-03 | 张英 [40.6%] | 13h | 系统测试报告 | 系统测试组 |
| 174 | 302.99.34.31 | **build2** | 4d | 2011-01-03 | 2011-01-06 |  | 16d |  |  | 52h |  |  |
| 175 | 302.99.34.31.25 | SDK系统测试 | 4d | 2011-01-03 | 2011-01-06 |  | 16d | start no earlier than 2011-01-03 | 闫祝亮 [81.2%] | 26h | 系统测试报告 | 系统测试组 |
| 176 | 302.99.34.31.26 | 设备程序系统测试 | 4d | 2011-01-03 | 2011-01-06 |  | 16d | start no earlier than 2011-01-03 | 周文斋 [40.6%] | 13h | 系统测试报告 | 系统测试组 |
| 177 | 302.99.34.31.27 | 客户端系统测试 | 4d | 2011-01-03 | 2011-01-06 |  | 16d | start no earlier than 2011-01-03 | 张英 [40.6%] | 13h | 系统测试报告 | 系统测试组 |
| 178 | 302.99.34.32 | **build3** | 4d | 2011-01-03 | 2011-01-06 |  | 16d |  |  | 52h |  |  |
| 179 | 302.99.34.32.23 | SDK系统测试 | 4d | 2011-01-03 | 2011-01-06 |  | 16d | start no earlier than 2011-01-03 | 闫祝亮 [81.2%] | 26h | 系统测试报告 | 系统测试组 |
| 180 | 302.99.34.32.24 | 设备程序系统测试 | 4d | 2011-01-03 | 2011-01-06 |  | 16d | start no earlier than 2011-01-03 | 周文斋 [40.6%] | 13h | 系统测试报告 | 系统测试组 |
| 181 | 302.99.34.32.25 | 客户端系统测试 | 4d | 2011-01-03 | 2011-01-06 |  | 16d | start no earlier than 2011-01-03 | 张英 [40.6%] | 13h | 系统测试报告 | 系统测试组 |
| 182 | 302.99.35 | **硬件测试** | 60d | 2010-11-01 | 2011-01-21 |  | 5d |  |  | 100h |  |  |
| 183 | 302.99.35.26 | 硬件测试用例编写 | 20d | 2010-11-01 | 2010-11-26 |  | 45d | start no earlier than 2010-11-01 | 王丹2 [25%] | 40h | 硬件测试用例 | 硬件测试组 |
| 184 | 302.99.35.27 | 样机硬件测试 | 30d | 2010-11-29 | 2011-01-07 |  | 15d | start no earlier than 2010-11-29 | 王丹2 [16.7%] | 40h | 可靠性测试报告 | 硬件测试组 |
| 185 | 302.99.35.28 | 小批试制阶段硬件抽测 | 10d | 2011-01-10 | 2011-01-21 |  | 5d | start no earlier than 2011-01-10 | 王丹2 [25%] | 20h | 可靠性测试报告 | 硬件测试组 |

| ID | WBS | Task | Type | Duration | Start | Finish | Predecessors | Total slack | Constraint | Resources | Work | 成果物 | 工作组 |
| --- | --- | --- | --- | --- | --- | --- | --- | --- | --- | --- | --- | --- | --- |
| 186 | 302.99.36 | **市场准入检测** |  | 19d | 2010-12-20 | 2011-01-13 |  | 11d |  |  | 80h |  |  |
| 187 | 302.99.36.3 | 市场准入检测 |  | 19d | 2010-12-20 | 2011-01-13 |  | 11d | start no earlier than 2010-12-20 | 金晶 [52.6%] | 80h | 市场准入检测记录 | 检测认证组 |
| 188 | 302.121 | **缺陷修复** |  | 60d | 2010-11-01 | 2011-01-21 |  | 5d |  |  | 320h |  |  |
| 189 | 302.121.18 | **软件缺陷修复** |  | 60d | 2010-11-01 | 2011-01-21 |  | 5d |  |  | 224h |  |  |
| 190 | 302.121.18.15 | 内核驱动软件缺陷修复 |  | 60d | 2010-11-01 | 2011-01-21 |  | 5d | finish no earlier than 2011-01-21 | 尹志新 [6.7%] | 32h | PC-lint告警消除报告 | 内核驱动开发组 |
| 191 | 302.121.18.16 | DM648DSP软件缺陷修复 |  | 60d | 2010-11-01 | 2011-01-21 |  | 5d | start no earlier than 2010-11-01 | 吕军 [6.7%] | 32h | PC-lint告警消除报告 | DSP程序开发组 |
| 192 | 302.121.18.17 | 设备软件缺陷修复 |  | 60d | 2010-11-01 | 2011-01-21 |  | 5d | start no earlier than 2010-11-01 | 陈翼飞 [13.3%] | 64h | PC-lint告警消除报告 | 设备程序开发组 |
| 193 | 302.121.18.18 | GUI软件缺陷修复 |  | 60d | 2010-11-01 | 2011-01-21 |  | 5d | start no earlier than 2010-11-01 | 张鹏举 [5%] | 24h | PC-lint告警消除报告 | GUI程序开发组 |
| 194 | 302.121.18.19 | 网络SDK软件缺陷修复 |  | 60d | 2010-11-01 | 2011-01-21 |  | 5d | start no earlier than 2010-11-01 | 徐斌峰 [5%] | 24h | PC-lint告警消除报告 | 网络SDK开发组 |
| 195 | 302.121.18.20 | IE控件软件缺陷修复 |  | 60d | 2010-11-01 | 2011-01-21 |  | 5d | start no earlier than 2010-11-01 | 胡胜宇 [5%] | 24h | PC-lint告警消除报告 | IE控件开发组 |
| 196 | 302.121.18.21 | 客户端软件缺陷修复 |  | 60d | 2010-11-01 | 2011-01-21 |  | 5d | start no earlier than 2010-11-01 | 余家骝 [5%] | 24h | PC-lint告警消除报告 | 客户端程序开发组 |
| 197 | 302.121.19 | **硬件缺陷修复** |  | 60d | 2010-11-01 | 2011-01-21 |  | 5d |  |  | 48h |  |  |
| 198 | 302.121.19.4 | 主板及按键板缺陷修复 |  | 60d | 2010-11-01 | 2011-01-21 |  | 5d | start no earlier than 2010-11-01 | 张亮 [10%] | 48h |  | 硬件开发组 |
| 199 | 302.121.20 | **结构缺陷修复** |  | 60d | 2010-11-01 | 2011-01-21 |  | 5d |  |  | 48h |  |  |
| 200 | 302.121.20.7 | 外观缺陷修复 |  | 60d | 2010-11-01 | 2011-01-21 |  | 5d | start no earlier than 2010-11-01 | 诸葛欣 [3.3%] | 16h |  | 结构开发组 |
| 201 | 302.121.20.8 | 面板缺陷修复 |  | 60d | 2010-11-01 | 2011-01-21 |  | 5d | start no earlier than 2010-11-01 | 翁轲杰 [3.3%] | 16h |  | 结构开发组 |
| 202 | 302.121.20.9 | 机箱缺陷修复 |  | 60d | 2010-11-01 | 2011-01-21 |  | 5d | start no earlier than 2010-11-01 | 张国梁 [3.3%] | 16h |  | 结构开发组 |
| 203 | 302.101 | 小批试制 |  | 10d | 2011-01-10 | 2011-01-21 |  | 0d | start no earlier than 2011-01-10 | 吕明成 [25%] | 20h | 小批试制报告 | 系统组 |
| 204 | 302.106 | 验证完成 | milestone | 0d | 2011-01-21 | 2011-01-21 | 203 | 0d | finish no earlier than 2011-01-21 |  |  |  |  |
| 205 | 302.108 | 产品发布 |  | 5d | 2011-01-24 | 2011-01-28 | 204 | 0d | start no earlier than 2011-01-24 | 吕明成 | 40h | 产品发布单号 | 系统组 |
| 206 | 302.109 | 产品发布完成 | milestone | 0d | 2011-01-28 | 2011-01-28 | 205 | 0d | start no earlier than 2011-01-28 |  |  |  |  |
| 207 | 302.104 | **管理支持** |  | 112d | 2010-08-20 | 2011-01-28 |  | 0d |  |  | 310h |  |  |
| 208 | 302.104.11 | 项目管理 |  | 112d | 2010-08-20 | 2011-01-28 |  | 0d | start no earlier than 2010-08-20 | 吕明成 [16.7%] | 150h | 项目进展报告、度量数据汇总表 | 管理支持组 |
| 209 | 302.104.12 | 配置管理 |  | 112d | 2010-08-20 | 2011-01-28 |  | 0d | finish no earlier than 2011-01-28 | 姚敏 [8.9%] | 80h | 配置管理计划、配置审计报告 | 管理支持组 |
| 210 | 302.104.13 | 质量保证 |  | 112d | 2010-08-20 | 2011-01-28 |  | 0d | finish no earlier than 2011-01-28 | 黄征宇 [8.9%] | 80h | 质量保证计划、质量检查单 | 管理支持组 |
