# 项目计划模板

Schedule from MS Project, 2010-05-24 to 2010-12-22.
Microsoft

## Calendars

- hikvision研发日历: Mon-Fri 08:00-12:00, 13:00-17:00; Sat-Sun off. Exceptions (off unless hours are given): 2010-06-12 to 2010-06-13 08:00-12:00, 13:00-17:00, 2010-06-14 to 2010-06-16, 2010-09-19 08:00-12:00, 13:00-17:00, 2010-09-22 to 2010-09-24, 2010-09-25 to 2010-09-26 08:00-12:00, 13:00-17:00, 2010-10-01 to 2010-10-02, 2010-10-04 to 2010-10-07, 2010-10-09 08:00-12:00, 13:00-17:00.

## Resources

| Resource |
| --- |
| 吕明成 |
| 尹志新 |
| 方建才 |
| 吕军 |
| 陈翼飞 |
| 李凯yf |
| 王辉 |
| 张鹏举 |
| 徐斌峰 |
| 胡胜宇 |
| 余家骝 |
| 张亮 |
| 诸葛欣 |
| 翁轲杰 |
| 张国梁 |
| 苏东寅 |
| 谭丽辉 |
| 李青青 |
| 闫祝亮 |
| 王丹2 |
| 金晶 |
| 周文斋 |
| 张英 |
| 姚敏 |
| 黄征宇 |
| 花蓉蓉 |
| 左智明 |
| 郭晓宇 |

## Schedule

| ID | WBS | Task | Duration | Start | Finish | Predecessors | Total slack | Free slack | Constraint | Resources | Work | 成果物 | 工作组 |
| --- | --- | --- | --- | --- | --- | --- | --- | --- | --- | --- | --- | --- | --- |
| 1 | 302 | **PJ01D2010081701** | 147d | 2010-05-24 | 2010-12-22 |  | 0d |  |  |  | 1815.2h |  |  |
| 2 | 302.89 | **需求分析** | 14.94d | 2010-05-24 | 2010-06-11 |  | 132.06d |  |  |  | 54h |  |  |
| 3 | 302.89.10 | 需求分析活动 | 12d | 2010-05-24 | 2010-06-09 |  | 133d | 0.94d | start no earlier than 2010-05-24 | 吕明成 [52.1%] | 50h | 需求分析矩阵、需求规格说明书 | 系统组 |
| 4 | 302.89.7 | 需求分析矩阵会议评审 | 2d | 2010-06-10 | 2010-06-11 | 3 | 132.06d |  | finish no earlier than 2010-06-11 | 吕明成 [25%] | 4h | 评审单号 | 系统组 |
| 5 | 302.93 | **软件开发** | 121d | 2010-06-10 | 2010-12-02 |  | 13.06d |  |  |  | 972h |  |  |
| 6 | 302.93.20 | **人脸抓拍模块** | 119.94d | 2010-06-11 | 2010-12-02 |  | 13.06d |  |  |  | 468h |  |  |
| 7 | 302.93.20.9 | **软件设计** | 24d | 2010-06-11 | 2010-07-16 |  | 109d |  |  |  | 84h |  |  |
| 8 | 302.93.20.9.6 | 软件设计活动 | 23d | 2010-06-11 | 2010-07-15 |  | 109d | 0d | start no earlier than 2010-06-11 | 尹志新 [43.5%] | 80h | 概要设计说明书 | 人脸识别算法组 |
| 9 | 302.93.20.9.7 | 软件概要设计说明书评审 | 1d | 2010-07-15 | 2010-07-16 | 8 | 109d |  |  | 尹志新 [50%] | 4h | 评审单号 | 人脸识别算法组 |
| 10 | 302.93.20.11 | 编程 | 77d | 2010-07-02 | 2010-10-22 |  | 42.06d |  | finish no earlier than 2010-10-22 | 尹志新 [50%] | 308h | 代码,PC-lint告警消除报告 | 人脸识别算法组 |
| 11 | 302.93.20.13 | 单元测试 | 23d | 2010-10-22 | 2010-11-23 |  | 20.06d |  | finish no earlier than 2010-11-23 | 尹志新 [32.6%] | 60h | 单元测试记录 | 人脸识别算法组 |
| 12 | 302.93.20.15 | 集成测试 | 5d | 2010-11-26 | 2010-12-02 |  | 13.06d |  | finish no earlier than 2010-12-02 | 尹志新 [40%] | 16h | 集成测试报告 | 人脸识别算法组 |
| 13 | 302.93.23 | **人脸建模及注册模块** | 121d | 2010-06-10 | 2010-12-02 |  | 13.06d |  |  |  | 504h |  |  |
| 14 | 1.2.2.1 | **软件设计** | 36d | 2010-06-10 | 2010-07-30 |  | 98.06d |  |  |  | 54h |  |  |
| 15 | 1.2.2.1.1 | 软件设计活动 | 35d | 2010-06-10 | 2010-07-29 |  | 98.06d | 0d | finish no earlier than 2010-07-29 | 尹志新 [17.9%] | 50h | 概要设计说明书 | 人脸识别算法组 |
| 16 | 1.2.2.1.2 | 软件概要设计说明书评审 | 1d | 2010-07-30 | 2010-07-30 | 15 | 98.06d |  |  | 尹志新 [50%] | 4h | 评审单号 | 人脸识别算法组 |
| 17 | 302.93.23.10 | 编程 | 68d | 2010-08-03 | 2010-11-10 |  | 29.06d |  | finish no earlier than 2010-11-10 | 郭晓宇 [71.7%] | 390h | 代码 | 人脸识别算法组 |
| 18 | 302.93.23.12 | 单元测试 | 12d | 2010-11-11 | 2010-11-29 |  | 17d |  | start no earlier than 2010-11-11 | 郭晓宇 [41.7%] | 40h | 单元测试记录 | 人脸识别算法组 |
| 19 | 302.93.23.15 | 集成测试 | 5d | 2010-11-26 | 2010-12-02 |  | 13.06d |  | start no earlier than 2010-11-26 | 郭晓宇 [50%] | 20h | 集成测试报告 | 人脸识别算法组 |
| 20 | 302.94 | **硬件开发** | 47.06d | 2010-09-19 | 2010-11-30 |  | 16d |  |  |  | 470h |  |  |
| 21 | 302.94.27 | **硬件详细设计** | 25d | 2010-09-19 | 2010-10-28 |  | 38.06d |  |  |  | 196h |  |  |
| 22 | 302.94.27.1 | 硬件详细设计活动 | 24d | 2010-09-19 | 2010-10-27 |  | 38.06d | 0d | finish no earlier than 2010-10-27 | 张亮 | 192h | 硬件详细设计书 | 硬件开发组 |
| 23 | 302.94.27.2 | 硬件详细设计说明书评审 | 1d | 2010-10-28 | 2010-10-28 | 22 | 38.06d |  |  | 张亮 [50%] | 4h | 评审单号 | 硬件开发组 |
| 24 | 302.94.11 | **单板原理设计** | 18d | 2010-10-08 | 2010-11-01 |  | 36.06d |  |  |  | 140h |  |  |
| 25 | 302.94.11.5 | 单板原理设计活动 | 17d | 2010-10-08 | 2010-10-29 |  | 36.06d | 0d | finish no earlier than 2010-10-29 | 张亮 | 136h | 原理图、PCB作业指导书、硬件开发检查单、单板BOM表 | 硬件开发组 |
| 26 | 302.94.11.6 | 原理图会议评审 | 1d | 2010-11-01 | 2010-11-01 | 25 | 36.06d |  | start no earlier than 2010-09-29 | 张亮 [50%] | 4h | 评审单号 | 硬件开发组 |
| 27 | 302.94.12 | PCB设计 | 16d | 2010-10-08 | 2010-10-28 |  | 38.06d |  | finish no earlier than 2010-10-28 | 张亮 [50%] | 64h | PCB图纸 | 硬件开发组 |
| 28 | 302.94.13 | 单板制作 | 9d | 2010-11-03 | 2010-11-15 |  | 26.06d |  | finish no earlier than 2010-11-15 | 张亮 [55.6%] | 40h | 单板试制报告 | 硬件开发组 |
| 29 | 302.94.14 | 单板调试 | 10d | 2010-11-16 | 2010-11-30 |  | 16d |  | start no earlier than 2010-11-16 | 张亮 [37.5%] | 30h | 单板调试记录 | 硬件开发组 |

| ID | WBS | Task | Type | Duration | Start | Finish | Predecessors | Total slack | Free slack | Constraint | Resources | Work | 成果物 | 工作组 |
| --- | --- | --- | --- | --- | --- | --- | --- | --- | --- | --- | --- | --- | --- | --- |
| 30 | 302.95 | **结构开发** |  | 47d | 2010-09-25 | 2010-12-02 |  | 13.06d |  |  |  | 255.2h |  |  |
| 31 | 302.95.18 | **外观设计** |  | 31d | 2010-09-25 | 2010-11-10 |  | 29.06d |  |  |  | 154h |  |  |
| 32 | 302.95.18.1 | 外观设计活动 |  | 30d | 2010-09-25 | 2010-11-09 |  | 29.06d | 0d | finish no earlier than 2010-11-09 | 翁轲杰 [62.5%] | 150h | 外观效果图 | 结构开发组 |
| 33 | 302.95.18.2 | 外观效果图评审 |  | 1d | 2010-11-10 | 2010-11-10 | 32 | 29.06d |  |  | 翁轲杰 [50%] | 4h | 评审单号 | 结构开发组 |
| 34 | 302.95.15 | **结构详细设计** |  | 8d | 2010-11-22 | 2010-12-01 |  | 14.06d |  |  |  | 34h |  |  |
| 35 | 302.95.15.3 | 结构详细设计活动 |  | 7d | 2010-11-22 | 2010-11-30 |  | 14.06d | 0d | finish no earlier than 2010-11-30 | 翁轲杰 [53.6%] | 30h | 二维图纸、三维图纸、PCB结构图纸 | 结构开发组 |
| 36 | 302.95.15.4 | 二维图、三维图评审 |  | 1d | 2010-12-01 | 2010-12-01 | 35 | 14.06d |  |  | 翁轲杰 [50%] | 4h | 评审单号 | 结构开发组 |
| 37 | 302.95.16 | 结构手板制作及验证 |  | 21d | 2010-11-04 | 2010-12-02 |  | 13.06d |  | finish no earlier than 2010-12-02 | 翁轲杰 [40%] | 67.2h | 手板检验报告 | 结构开发组 |
| 38 | 302.97 | 整机集成及测试 |  | 5d | 2010-12-02 | 2010-12-09 |  | 9d |  | start no earlier than 2010-12-02 | 吕明成 [75%] | 30h | 集成测试报告 | 系统组 |
| 39 | 302.108 | **预研总结** |  | 7d | 2010-12-10 | 2010-12-21 |  | 1d |  |  |  | 34h |  |  |
| 40 | 1.6.1 | 预研总结活动 |  | 5d | 2010-12-10 | 2010-12-17 |  | 2d | 1d | start no earlier than 2010-12-10 | 吕明成 [75%] | 30h | 预研报告 | 系统组 |
| 41 | 1.6.2 | 预研报告会议评审 |  | 1d | 2010-12-20 | 2010-12-21 | 40 | 1d |  | start no earlier than 2010-12-20 | 吕明成 [50%] | 4h | 评审单号 | 系统组 |
| 42 | 302.109 | 预研总结完成 | milestone | 0d | 2010-12-22 | 2010-12-22 | 41 | 0d |  | start no earlier than 2010-12-22 |  |  |  |  |
